# Buzos_MT

Schedule from MS Project, 2024-01-22 to 2025-05-08, costs in $, A marks actual dates.

## Calendars

- Calendario de Trabajo: Mon 06:00-12:00, 13:00-15:30; Tue-Sat 06:00-12:00, 13:00-15:00; Sun off. Exceptions (off unless hours are given): 2024-03-25 (Día de San José), 2024-03-28 (Jueves Santo), 2024-03-29 (Viernes Santo), 2024-05-01 (Día del trabajador.), 2024-05-13 (Ascención de Jesús.), 2024-06-03 (Corpus Christi), 2024-06-10 (Sagrado Corazón de Jesús), 2024-07-01 (San Pedro y San Pablo), 2024-08-07 (Batalla de Boyacá), 2024-08-19 (Asunción de la virgen.), 2024-10-14 (Día de la raza.), 2024-11-04 (Todos los Santos), 2024-11-11 (Independencia de Cartagena.), 2025-03-24 (Día de San José), 2025-04-17 (Jueves Santo), 2025-04-18 (Viernes Sano), 2025-05-01 (Día del trabajador).

## Resources

| Resource | Rate |
| --- | --- |
| Desarrolladores de Software | 5658 |
| Analista de Negocios | 5658 |
| Red de Internet | 250 |
| Computador | 215 |
| Gerente de proyecto | 5658 |
| Diseñador UX/UI | 5658 |
| Software de Modelado BPMN |  |
| Administrador de Base de Datos | 5658 |
| Equipo de desarrollo | 5658 |
| Tester | 5658 |
| Administrador de Sistema | 5658 |

## Schedule

| ID | WBS | Task | Duration | Start | Finish | Predecessors | Complete | Resources | Work | Actual work | Cost | Actual cost |
| --- | --- | --- | --- | --- | --- | --- | --- | --- | --- | --- | --- | --- |
| 1 | 1 | **Trimestre 1** | 68d | 2024-01-22 A | 2024-04-12 A |  | 100% |  | 1088h | 1088h | 3,203,312 | 3,203,312 |
| 2 | 1.1 | **1. Especificaciones del Proyecto** | 12d | 2024-01-22 A | 2024-02-03 A |  | 100% |  | 96h | 96h | 543,168 | 543,168 |
| 3 | 1.1.1 | 1.1 Definir nombre del proyecto | 1d | 2024-01-22 A | 2024-01-22 A |  | 100% | Gerente de proyecto | 8h | 8h | 45,264 | 45,264 |
| 4 | 1.1.2 | 1.2 Redactar el objetivo general | 1d | 2024-01-22 A | 2024-01-23 A | 3 | 100% | Gerente de proyecto | 8h | 8h | 45,264 | 45,264 |
| 5 | 1.1.3 | 1.3 Redactar los objetivos específicos | 2d | 2024-01-23 A | 2024-01-25 A | 4 | 100% | Gerente de proyecto | 16h | 16h | 90,528 | 90,528 |
| 6 | 1.1.4 | 1.4 Realizar el planteamiento del problema | 3d | 2024-01-25 A | 2024-01-29 A | 5 | 100% | Analista de Negocios | 24h | 24h | 135,792 | 135,792 |
| 7 | 1.1.5 | 1.5 Formular la pregunta problema | 1d | 2024-01-29 A | 2024-01-30 A | 6 | 100% | Analista de Negocios | 8h | 8h | 45,264 | 45,264 |
| 8 | 1.1.6 | 1.6 Determinar el alcance del proyecto | 2d | 2024-01-30 A | 2024-02-01 A | 7 | 100% | Gerente de proyecto | 16h | 16h | 90,528 | 90,528 |
| 9 | 1.1.7 | 1.7 Justificar la necesidad del proyecto | 2d | 2024-02-01 A | 2024-02-03 A | 8 | 100% | Analista de Negocios | 16h | 16h | 90,528 | 90,528 |
| 10 | 1.2 | **2. Identificación Procesos de Negocio** | 12d | 2024-02-03 A | 2024-02-17 A |  | 100% |  | 208h | 208h | 568,648 | 568,648 |
| 11 | 1.2.1 | 2.1 Identificar procesos clave del negocio | 3d | 2024-02-03 A | 2024-02-07 A | 9 | 100% | Analista de Negocios | 24h | 24h | 135,792 | 135,792 |
| 12 | 1.2.2 | 2.2 Reunir información sobre los procesos | 3d | 2024-02-07 A | 2024-02-10 A | 11 | 100% | Analista de Negocios; Computador; Red de Internet | 72h | 72h | 146,952 | 146,952 |
| 13 | 1.2.3 | 2.3 Diseñar el diagrama BPMN | 4d | 2024-02-10 A | 2024-02-15 A | 12 | 100% | Analista de Negocios; Computador; Software de Modelado BPMN | 64h | 64h | 187,936 | 187,936 |
| 14 | 1.2.4 | 2.4 Revisar y validar el diagrama BPMN | 2d | 2024-02-15 A | 2024-02-17 A | 13 | 100% | Analista de Negocios; Computador; Red de Internet | 48h | 48h | 97,968 | 97,968 |
| 15 | 1.3 | **3. Análisis y recolección de información.** | 15d | 2024-02-17 A | 2024-03-06 A |  | 100% |  | 248h | 248h | 708,720 | 708,720 |
| 16 | 1.3.1 | 3.1 Seleccionar técnicas de recolección de información | 2d | 2024-02-17 A | 2024-02-20 A | 14 | 100% | Analista de Negocios | 16h | 16h | 90,528 | 90,528 |
| 17 | 1.3.2 | 3.2 Diseñar instrumentos de recolección de datos (encuestas, entrevistas, etc.) | 3d | 2024-02-20 A | 2024-02-23 A | 16 | 100% | Analista de Negocios; Computador; Red de Internet | 72h | 72h | 146,952 | 146,952 |
| 18 | 1.3.3 | 3.3 Aplicar técnicas de recolección de información | 5d | 2024-02-23 A | 2024-02-29 A | 17 | 100% | Analista de Negocios | 40h | 40h | 226,320 | 226,320 |
| 19 | 1.3.4 | 3.4 Analizar resultados con estadística descriptiva | 3d | 2024-02-29 A | 2024-03-04 A | 18 | 100% | Analista de Negocios; Computador; Red de Internet | 72h | 72h | 146,952 | 146,952 |
| 20 | 1.3.5 | 3.5 Documentar análisis de resultados | 2d | 2024-03-04 A | 2024-03-06 A | 19 | 100% | Analista de Negocios; Computador; Red de Internet | 48h | 48h | 97,968 | 97,968 |
| 21 | 1.4 | **4. Requerimientos funcionales y no funcionales.** | 12d | 2024-03-06 A | 2024-03-20 A |  | 100% |  | 160h | 160h | 558,048 | 558,048 |
| 22 | 1.4.1 | 4.1 Identificar requerimientos funcionales | 5d | 2024-03-06 A | 2024-03-12 A | 20 | 100% | Analista de Negocios | 40h | 40h | 226,320 | 226,320 |
| 23 | 1.4.2 | 4.2 Identificar requerimientos no funcionales | 3d | 2024-03-12 A | 2024-03-15 A | 22 | 100% | Analista de Negocios | 24h | 24h | 135,792 | 135,792 |
| 24 | 1.4.3 | 4.3 Documentar requerimientos según el estándar IEEE-830 | 4d | 2024-03-15 A | 2024-03-20 A | 23 | 100% | Analista de Negocios; Computador; Red de Internet | 96h | 96h | 195,936 | 195,936 |

| ID | WBS | Task | Duration | Start | Finish | Predecessors | Complete | Resources | Work | Actual work | Cost | Actual cost |
| --- | --- | --- | --- | --- | --- | --- | --- | --- | --- | --- | --- | --- |
| 25 | 1.5 | **5. Prototipo del proyecto.** | 13d | 2024-03-20 A | 2024-04-08 A |  | 100% |  | 312h | 312h | 636,792 | 636,792 |
| 26 | 1.5.1 | 5.1 Diseñar mockups o wireframes | 5d | 2024-03-20 A | 2024-03-27 A | 24 | 100% | Computador; Diseñador UX/UI; Red de Internet | 120h | 120h | 244,920 | 244,920 |
| 27 | 1.5.2 | 5.2 Revisar mockups o wireframes con stakeholders | 3d | 2024-03-27 A | 2024-04-02 A | 26 | 100% | Computador; Diseñador UX/UI; Red de Internet | 72h | 72h | 146,952 | 146,952 |
| 28 | 1.5.3 | 5.3 Ajustar diseños según feedback | 3d | 2024-04-02 A | 2024-04-05 A | 27 | 100% | Computador; Diseñador UX/UI; Red de Internet | 72h | 72h | 146,952 | 146,952 |
| 29 | 1.5.4 | 5.4 Aprobar prototipo final | 2d | 2024-04-05 A | 2024-04-08 A | 28 | 100% | Computador; Diseñador UX/UI; Red de Internet | 48h | 48h | 97,968 | 97,968 |
| 30 | 1.6 | **6. Implementación del Sistema Control de Versiones** | 4d | 2024-04-08 A | 2024-04-12 A |  | 100% |  | 64h | 64h | 187,936 | 187,936 |
| 31 | 1.6.1 | 6.1 Seleccionar sistema de control de versiones (por ejemplo, Git) | 1d | 2024-04-08 A | 2024-04-09 A | 29 | 100% | Computador; Desarrolladores de Software | 16h | 16h | 46,984 | 46,984 |
| 32 | 1.6.2 | 6.2 Configurar repositorio de control de versiones | 2d | 2024-04-09 A | 2024-04-11 A | 31 | 100% | Computador; Desarrolladores de Software | 32h | 32h | 93,968 | 93,968 |
| 33 | 1.6.3 | 6.3 Documentar procedimientos de uso del sistema de control de versiones | 1d | 2024-04-11 A | 2024-04-12 A | 32 | 100% | Computador; Desarrolladores de Software | 16h | 16h | 46,984 | 46,984 |
| 34 | 2 | **Trimestre 2** | 61d | 2024-04-15 A | 2024-06-28 A |  | 100% |  | 1312h | 1312h | 2,952,264 | 2,952,264 |
| 35 | 2.1 | **1. Implementación de Fichas Técnicas** | 10d | 2024-04-15 A | 2024-04-25 A |  | 100% |  | 240h | 240h | 489,840 | 489,840 |
| 36 | 2.1.1 | 1.1 Diseñar formatos de fichas técnicas | 3d | 2024-04-15 A | 2024-04-17 A | 33 | 100% | Analista de Negocios; Computador; Red de Internet | 72h | 72h | 146,952 | 146,952 |
| 37 | 2.1.2 | 1.2 Estimar costos de software y hardware | 3d | 2024-04-17 A | 2024-04-20 A | 36 | 100% | Analista de Negocios; Computador; Red de Internet | 72h | 72h | 146,952 | 146,952 |
| 38 | 2.1.3 | 1.3 Realizar análisis comparativo de proveedores | 2d | 2024-04-20 A | 2024-04-23 A | 37 | 100% | Analista de Negocios; Computador; Red de Internet | 48h | 48h | 97,968 | 97,968 |
| 39 | 2.1.4 | 1.4 Documentar fichas técnicas y análisis comparativo | 2d | 2024-04-23 A | 2024-04-25 A | 38 | 100% | Analista de Negocios; Computador; Red de Internet | 48h | 48h | 97,968 | 97,968 |
| 40 | 2.2 | **2. Documentación de Caso de Uso** | 10d | 2024-04-25 A | 2024-05-08 A |  | 100% |  | 152h | 152h | 468,960 | 468,960 |
| 41 | 2.2.1 | 2.1 Identificar actores y casos de uso | 2d | 2024-04-25 A | 2024-04-27 A | 39 | 100% | Analista de Negocios | 16h | 16h | 90,528 | 90,528 |
| 42 | 2.2.2 | 2.2 Diseñar diagrama de casos de uso | 3d | 2024-04-27 A | 2024-05-02 A | 41 | 100% | Analista de Negocios; Computador; Software de Modelado BPMN | 48h | 48h | 140,952 | 140,952 |
| 43 | 2.2.3 | 2.3 Redactar casos de uso extendidos | 3d | 2024-05-02 A | 2024-05-06 A | 42 | 100% | Analista de Negocios; Computador; Red de Internet | 72h | 72h | 146,952 | 146,952 |
| 44 | 2.2.4 | 2.4 Revisar y aprobar documentación de casos de uso | 2d | 2024-05-06 A | 2024-05-08 A | 43 | 100% | Analista de Negocios | 16h | 16h | 90,528 | 90,528 |
| 45 | 2.3 | **3. Diseño del Modelo Entidad Relación.** | 9d | 2024-05-08 A | 2024-05-20 A |  | 100% |  | 152h | 152h | 425,976 | 425,976 |
| 46 | 2.3.1 | 3.1 Identificar entidades y relaciones | 2d | 2024-05-08 A | 2024-05-10 A | 44 | 100% | Desarrolladores de Software | 16h | 16h | 90,528 | 90,528 |
| 47 | 2.3.2 | 3.2 Diseñar modelo entidad relación (ER) | 3d | 2024-05-10 A | 2024-05-15 A | 46 | 100% | Computador; Desarrolladores de Software; Red de Internet | 72h | 72h | 146,952 | 146,952 |
| 48 | 2.3.3 | 3.3 Validar modelo ER con stakeholders | 2d | 2024-05-15 A | 2024-05-17 A | 47 | 100% | Computador; Desarrolladores de Software; Red de Internet | 48h | 48h | 97,968 | 97,968 |
| 49 | 2.3.4 | 3.4 Aprobar modelo ER final | 2d | 2024-05-17 A | 2024-05-20 A | 48 | 100% | Desarrolladores de Software | 16h | 16h | 90,528 | 90,528 |

| ID | WBS | Task | Duration | Start | Finish | Predecessors | Complete | Total slack | Free slack | Resources | Work | Actual work | Cost | Actual cost |
| --- | --- | --- | --- | --- | --- | --- | --- | --- | --- | --- | --- | --- | --- | --- |
| 50 | 2.4 | **4. Normalización de la base de datos.** | 9d | 2024-05-20 A | 2024-05-30 A |  | 100% |  |  |  | 216h | 216h | 440,856 | 440,856 |
| 51 | 2.4.1 | 4.1 Diseñar modelo relacional | 3d | 2024-05-20 A | 2024-05-23 A | 49 | 100% |  |  | Computador; Desarrolladores de Software; Red de Internet | 72h | 72h | 146,952 | 146,952 |
| 52 | 2.4.2 | 4.2 Normalizar modelo a 1FN | 1d | 2024-05-23 A | 2024-05-24 A | 51 | 100% |  |  | Computador; Desarrolladores de Software; Red de Internet | 24h | 24h | 48,984 | 48,984 |
| 53 | 2.4.3 | 4.3 Normalizar modelo a 2FN | 1d | 2024-05-24 A | 2024-05-25 A | 52 | 100% |  |  | Computador; Desarrolladores de Software; Red de Internet | 24h | 24h | 48,984 | 48,984 |
| 54 | 2.4.4 | 4.4 Normalizar modelo a 3FN | 2d | 2024-05-25 A | 2024-05-28 A | 53 | 100% |  |  | Computador; Desarrolladores de Software; Red de Internet | 48h | 48h | 97,968 | 97,968 |
| 55 | 2.4.5 | 4.5 Validar y aprobar modelo normalizado | 2d | 2024-05-28 A | 2024-05-30 A | 54 | 100% |  |  | Computador; Desarrolladores de Software; Red de Internet | 48h | 48h | 97,968 | 97,968 |
| 56 | 2.5 | **5. Desarrollo del Diccionario de Datos.** | 5d | 2024-05-30 A | 2024-06-06 A |  | 100% |  |  |  | 120h | 120h | 244,920 | 244,920 |
| 57 | 2.5.1 | 5.1 Definir estructura del diccionario de datos | 2d | 2024-05-30 A | 2024-06-01 A | 55 | 100% |  |  | Computador; Desarrolladores de Software; Red de Internet | 48h | 48h | 97,968 | 97,968 |
| 58 | 2.5.2 | 5.2 Documentar campos, tipos de datos y restricciones | 2d | 2024-06-01 A | 2024-06-05 A | 57 | 100% |  |  | Computador; Desarrolladores de Software; Red de Internet | 48h | 48h | 97,968 | 97,968 |
| 59 | 2.5.3 | 5.3 Revisar y aprobar diccionario de datos | 1d | 2024-06-05 A | 2024-06-06 A | 58 | 100% |  |  | Computador; Desarrolladores de Software; Red de Internet | 24h | 24h | 48,984 | 48,984 |
| 60 | 2.6 | **6. Desarrollo del Diagrama de Clases** | 10d | 2024-06-06 A | 2024-06-19 A |  | 100% |  |  |  | 240h | 240h | 489,840 | 489,840 |
| 61 | 2.6.1 | 6.1 Identificar clases y relaciones | 3d | 2024-06-06 A | 2024-06-11 A | 59 | 100% |  |  | Computador; Desarrolladores de Software; Red de Internet | 72h | 72h | 146,952 | 146,952 |
| 62 | 2.6.2 | 6.2 Diseñar diagrama de clases UML | 3d | 2024-06-11 A | 2024-06-14 A | 61 | 100% |  |  | Computador; Desarrolladores de Software; Red de Internet | 72h | 72h | 146,952 | 146,952 |
| 63 | 2.6.3 | 6.3 Validar diagrama con stakeholders | 2d | 2024-06-14 A | 2024-06-17 A | 62 | 100% |  |  | Computador; Desarrolladores de Software; Red de Internet | 48h | 48h | 97,968 | 97,968 |
| 64 | 2.6.4 | 6.4 Aprobar diagrama de clases final | 2d | 2024-06-17 A | 2024-06-19 A | 63 | 100% |  |  | Computador; Desarrolladores de Software; Red de Internet | 48h | 48h | 97,968 | 97,968 |
| 65 | 2.7 | **7. Desarrollo del Diagrama de Despliegue.** | 8d | 2024-06-19 A | 2024-06-28 A |  | 100% |  |  |  | 192h | 192h | 391,872 | 391,872 |
| 66 | 2.7.1 | 7.1 Diseñar diagrama de despliegue UML | 4d | 2024-06-19 A | 2024-06-24 A | 64 | 100% |  |  | Computador; Desarrolladores de Software; Red de Internet | 96h | 96h | 195,936 | 195,936 |
| 67 | 2.7.2 | 7.2 Validar diagrama con stakeholders | 2d | 2024-06-24 A | 2024-06-26 A | 66 | 100% |  |  | Computador; Desarrolladores de Software; Red de Internet | 48h | 48h | 97,968 | 97,968 |
| 68 | 2.7.3 | 7.3 Aprobar diagrama de despliegue final | 2d | 2024-06-26 A | 2024-06-28 A | 67 | 100% |  |  | Computador; Desarrolladores de Software; Red de Internet | 48h | 48h | 97,968 | 97,968 |
| 69 | 3 | **Trimestre 3** | 41d | 2024-07-08 | 2024-08-26 |  |  |  |  |  | 664h |  | 1,933,944 |  |
| 70 | 3.1 | **1. Construcción de la base de datos** | 11d | 2024-07-08 | 2024-07-19 |  |  | 95.5d |  |  | 184h |  | 520,224 |  |
| 71 | 3.1.1 | 1.1 Definir estructura de tablas/colecciones | 2d | 2024-07-08 | 2024-07-09 |  |  | 95.5d | 0d | Administrador de Base de Datos | 16h |  | 90,528 |  |
| 72 | 3.1.2 | 1.2 Escribir sentencias DDL (SQL) o definir esquemas (MongoDB) | 3d | 2024-07-09 | 2024-07-12 | 71 |  | 95.5d | 0d | Administrador de Base de Datos; Computador; Red de Internet | 72h |  | 146,952 |  |
| 73 | 3.1.3 | 1.3 Crear base de datos y tablas/colecciones en el entorno de desarrollo | 3d | 2024-07-12 | 2024-07-16 | 72 |  | 95.5d | 0d | Administrador de Base de Datos; Computador; Red de Internet | 72h |  | 146,952 |  |
| 74 | 3.1.4 | 1.4 Validar estructura de la base de datos | 2d | 2024-07-16 | 2024-07-18 | 73 |  | 95.5d | 0d | Administrador de Base de Datos | 16h |  | 90,528 |  |
| 75 | 3.1.5 | 1.5 Documentar estructura de la base de datos | 1d | 2024-07-18 | 2024-07-19 | 74 |  | 95.5d | 0d | Administrador de Base de Datos | 8h |  | 45,264 |  |

| ID | WBS | Task | Duration | Start | Finish | Predecessors | Total slack | Free slack | Resources | Work | Cost |
| --- | --- | --- | --- | --- | --- | --- | --- | --- | --- | --- | --- |
| 76 | 3.2 | **2. Uso de la base de datos a través de sentencias DML (SQL)** | 8d | 2024-07-19 | 2024-07-29 |  | 95.5d |  |  | 112h | 373,272 |
| 77 | 3.2.1 | 2.1 Insertar datos de prueba | 2d | 2024-07-19 | 2024-07-22 | 75 | 95.5d | 0d | Administrador de Base de Datos | 16h | 90,528 |
| 78 | 3.2.2 | 2.2 Realizar consultas y subconsultas (SQL) o CRUD Operations y aggregations (MongoDB) | 3d | 2024-07-22 | 2024-07-25 | 77 | 95.5d | 0d | Administrador de Base de Datos; Computador; Red de Internet | 72h | 146,952 |
| 79 | 3.2.3 | 2.3 Validar resultados de consultas | 2d | 2024-07-25 | 2024-07-27 | 78 | 95.5d | 0d | Administrador de Base de Datos | 16h | 90,528 |
| 80 | 3.2.4 | 2.4 Documentar ejemplos de consultas y resultados | 1d | 2024-07-27 | 2024-07-29 | 79 | 95.5d | 0d | Administrador de Base de Datos | 8h | 45,264 |
| 81 | 3.3 | **3. Esquema de seguridad de la Base de Datos** | 9d | 2024-07-29 | 2024-08-09 |  | 95.5d |  |  | 104h | 414,816 |
| 82 | 3.3.1 | 3.1 Diseñar esquema de seguridad de la base de datos | 2d | 2024-07-29 | 2024-07-31 | 80 | 95.5d | 0d | Administrador de Base de Datos; Computador; Red de Internet | 48h | 97,968 |
| 83 | 3.3.2 | 3.2 Implementar encriptación de contraseñas | 2d | 2024-07-31 | 2024-08-02 | 82 | 95.5d | 0d | Administrador de Base de Datos | 16h | 90,528 |
| 84 | 3.3.3 | 3.3 Aplicar prácticas de seguridad de datos | 2d | 2024-08-02 | 2024-08-05 | 83 | 95.5d | 0d | Administrador de Base de Datos | 16h | 90,528 |
| 85 | 3.3.4 | 3.4 Validar seguridad de la base de datos | 2d | 2024-08-05 | 2024-08-08 | 84 | 95.5d | 0d | Administrador de Base de Datos | 16h | 90,528 |
| 86 | 3.3.5 | 3.5 Documentar prácticas de seguridad | 1d | 2024-08-08 | 2024-08-09 | 85 | 95.5d | 0d | Administrador de Base de Datos | 8h | 45,264 |
| 87 | 3.4 | **4. Realización del FrontEnd Funcional** | 13d | 2024-08-09 | 2024-08-26 |  | 95.5d |  |  | 264h | 625,632 |
| 88 | 3.4.1 | 4.1 Diseñar estructura y navegación del FrontEnd | 3d | 2024-08-09 | 2024-08-13 | 86 | 95.5d | 0d | Computador; Desarrolladores de Software; Red de Internet | 72h | 146,952 |
| 89 | 3.4.2 | 4.2 Implementar diseño con HTML y CSS | 4d | 2024-08-13 | 2024-08-17 | 88 | 95.5d | 0d | Computador; Desarrolladores de Software; Red de Internet | 96h | 195,936 |
| 90 | 3.4.3 | 4.3 Integrar FrontEnd con la base de datos | 3d | 2024-08-17 | 2024-08-22 | 89 | 95.5d | 0d | Computador; Desarrolladores de Software; Red de Internet | 72h | 146,952 |
| 91 | 3.4.4 | 4.4 Validar funcionalidad del FrontEnd | 2d | 2024-08-22 | 2024-08-24 | 90 | 95.5d | 0d | Desarrolladores de Software | 16h | 90,528 |
| 92 | 3.4.5 | 4.5 Documentar estructura y funcionalidades del FrontEnd | 1d | 2024-08-24 | 2024-08-26 | 91 | 95.5d | 0d | Desarrolladores de Software | 8h | 45,264 |
| 93 | 4 | **Trimestre 4** | 28d | 2024-08-26 | 2024-09-27 |  | 95.5d |  |  | 592h | 1,352,952 |
| 94 | 4.1 | **1. Implementación de la API REST** | 14d | 2024-08-26 | 2024-09-11 |  | 95.5d |  |  | 288h | 674,616 |
| 95 | 4.1.1 | 1.1 Diseñar estructura de la API REST | 4d | 2024-08-26 | 2024-08-30 | 92 | 95.5d | 0d | Computador; Desarrolladores de Software; Red de Internet | 96h | 195,936 |
| 96 | 4.1.2 | 1.2 Implementar endpoints de la API | 4d | 2024-08-30 | 2024-09-04 | 95 | 95.5d | 0d | Computador; Desarrolladores de Software; Red de Internet | 96h | 195,936 |
| 97 | 4.1.3 | 1.3 Agregar seguridad a la API (autenticación y autorización) | 3d | 2024-09-04 | 2024-09-07 | 96 | 95.5d | 0d | Computador; Desarrolladores de Software; Red de Internet | 72h | 146,952 |
| 98 | 4.1.4 | 1.4 Validar funcionalidad y seguridad de la API | 2d | 2024-09-07 | 2024-09-10 | 97 | 95.5d | 0d | Desarrolladores de Software | 16h | 90,528 |
| 99 | 4.1.5 | 1.5 Documentar endpoints y seguridad de la API | 1d | 2024-09-10 | 2024-09-11 | 98 | 95.5d | 0d | Desarrolladores de Software | 8h | 45,264 |

| ID | WBS | Task | Duration | Start | Finish | Predecessors | Total slack | Free slack | Resources | Work | Cost |
| --- | --- | --- | --- | --- | --- | --- | --- | --- | --- | --- | --- |
| 100 | 4.2 | **2. Consumo de la API REST por el front end web , con un avance del 80% de la codificación.** | 14d | 2024-09-11 | 2024-09-27 |  | 95.5d |  |  | 304h | 678,336 |
| 101 | 4.2.1 | 2.1 Integrar front end con la API REST | 3d | 2024-09-11 | 2024-09-14 | 99 | 95.5d | 0d | Computador; Desarrolladores de Software; Red de Internet | 72h | 146,952 |
| 102 | 4.2.2 | 2.2 Implementar funcionalidades del front end (80%) | 5d | 2024-09-14 | 2024-09-20 | 101 | 95.5d | 0d | Computador; Desarrolladores de Software; Red de Internet | 120h | 244,920 |
| 103 | 4.2.3 | 2.3 Realizar pruebas de integración front end y API | 4d | 2024-09-20 | 2024-09-25 | 102 | 95.5d | 0d | Computador; Desarrolladores de Software; Red de Internet | 96h | 195,936 |
| 104 | 4.2.4 | 2.4 Documentar progreso del desarrollo front end | 2d | 2024-09-25 | 2024-09-27 | 103 | 95.5d |  | Desarrolladores de Software | 16h | 90,528 |
| 105 | 5 | **Trimestre 5** | 56d | 2025-01-20 | 2025-03-26 |  |  |  |  | 976h | 2,657,544 |
| 106 | 5.1 | **1. Desarrollo de la codificación al 100%** | 19d | 2025-01-20 | 2025-02-10 |  | 0d |  |  | 456h | 930,696 |
| 107 | 5.1.1 | 1.1 Completar la codificación del backend | 5d | 2025-01-20 | 2025-01-24 | 104 | 0d |  | Computador; Desarrolladores de Software; Red de Internet | 120h | 244,920 |
| 108 | 5.1.2 | 1.2 Completar la codificación del frontend | 5d | 2025-01-24 | 2025-01-30 | 107 | 0d |  | Computador; Desarrolladores de Software; Red de Internet | 120h | 244,920 |
| 109 | 5.1.3 | 1.3 Integrar y probar todas las funcionalidades | 3d | 2025-01-30 | 2025-02-03 | 108 | 0d |  | Computador; Desarrolladores de Software; Red de Internet | 72h | 146,952 |
| 110 | 5.1.4 | 1.4 Realizar pruebas unitarias y de integración | 3d | 2025-02-03 | 2025-02-06 | 109 | 0d |  | Computador; Desarrolladores de Software; Red de Internet | 72h | 146,952 |
| 111 | 5.1.5 | 1.5 Documentar la codificación completa | 3d | 2025-02-06 | 2025-02-10 | 110 | 0d |  | Computador; Desarrolladores de Software; Red de Internet | 72h | 146,952 |
| 112 | 5.2 | **2. Implementación de la aplicación móvil.** | 16d | 2025-02-10 | 2025-02-28 |  | 0d |  |  | 304h | 765,144 |
| 113 | 5.2.1 | 2.1 Diseñar estructura de la aplicación móvil | 3d | 2025-02-10 | 2025-02-13 | 111 | 0d |  | Computador; Desarrolladores de Software; Red de Internet | 72h | 146,952 |
| 114 | 5.2.2 | 2.2 Implementar funcionalidades de la aplicación móvil | 5d | 2025-02-13 | 2025-02-19 | 113 | 0d |  | Computador; Desarrolladores de Software; Red de Internet | 120h | 244,920 |
| 115 | 5.2.3 | 2.3 Integrar aplicación móvil con la API REST | 3d | 2025-02-19 | 2025-02-22 | 114 | 0d |  | Computador; Desarrolladores de Software; Red de Internet | 72h | 146,952 |
| 116 | 5.2.4 | 2.4 Realizar pruebas de la aplicación móvil | 3d | 2025-02-22 | 2025-02-26 | 115 | 0d |  | Desarrolladores de Software | 24h | 135,792 |
| 117 | 5.2.5 | 2.5 Documentar integración y pruebas | 2d | 2025-02-26 | 2025-02-28 | 116 | 0d |  | Desarrolladores de Software | 16h | 90,528 |
| 118 | 5.3 | **3. Implementación de la API REST documentada.** | 7d | 2025-02-28 | 2025-03-08 |  | 0d |  |  | 56h | 316,848 |
| 119 | 5.3.1 | 3.1 Configurar herramienta de documentación de la API | 1d | 2025-02-28 | 2025-03-01 | 117 | 0d |  | Desarrolladores de Software | 8h | 45,264 |
| 120 | 5.3.2 | 3.2 Generar documentación automática de los endpoints | 2d | 2025-03-01 | 2025-03-04 | 119 | 0d |  | Desarrolladores de Software | 16h | 90,528 |
| 121 | 5.3.3 | 3.3 Revisar y ajustar documentación | 2d | 2025-03-04 | 2025-03-06 | 120 | 0d |  | Desarrolladores de Software | 16h | 90,528 |
| 122 | 5.3.4 | 3.4 Validar la documentación de la API con stakeholders | 1d | 2025-03-06 | 2025-03-07 | 121 | 0d |  | Desarrolladores de Software | 8h | 45,264 |
| 123 | 5.3.5 | 3.5 Publicar documentación final de la API | 1d | 2025-03-07 | 2025-03-08 | 122 | 0d |  | Desarrolladores de Software | 8h | 45,264 |

| ID | WBS | Task | Duration | Start | Finish | Predecessors | Total slack | Resources | Work | Cost |
| --- | --- | --- | --- | --- | --- | --- | --- | --- | --- | --- |
| 124 | 5.4 | **4. Aplicación de una metodología ágil.** | 14d | 2025-03-08 | 2025-03-26 |  | 0d |  | 160h | 644,856 |
| 125 | 5.4.1 | 4.1 Definir backlog y roles del proyecto | 2d | 2025-03-08 | 2025-03-11 | 123 | 0d | Equipo de desarrollo | 16h | 90,528 |
| 126 | 5.4.2 | 4.2 Planificar y realizar sprints | 5d | 2025-03-11 | 2025-03-17 | 125 | 0d | Equipo de desarrollo | 40h | 226,320 |
| 127 | 5.4.3 | 4.3 Revisar y ajustar entregables por sprint | 3d | 2025-03-17 | 2025-03-20 | 126 | 0d | Computador; Equipo de desarrollo; Red de Internet | 72h | 146,952 |
| 128 | 5.4.4 | 4.4 Realizar reuniones de seguimiento y retrospectivas | 2d | 2025-03-20 | 2025-03-22 | 127 | 0d | Equipo de desarrollo | 16h | 90,528 |
| 129 | 5.4.5 | 4.5 Documentar aplicación de la metodología ágil | 2d | 2025-03-22 | 2025-03-26 | 128 | 0d | Equipo de desarrollo | 16h | 90,528 |
| 130 | 6 | **Trimestre 6** | 34d | 2025-03-26 | 2025-05-08 |  | 0d |  | 496h | 1,460,704 |
| 131 | 6.1 | **1. Aplicación de técnica de pruebas de software** | 12d | 2025-03-26 | 2025-04-09 |  | 0d |  | 288h | 587,808 |
| 132 | 6.1.1 | 1.1 Definir plan de pruebas de software | 2d | 2025-03-26 | 2025-03-28 | 129 | 0d | Computador; Red de Internet; Tester | 48h | 97,968 |
| 133 | 6.1.2 | 1.2 Ejecutar pruebas de funcionalidad y rendimiento | 4d | 2025-03-28 | 2025-04-02 | 132 | 0d | Computador; Red de Internet; Tester | 96h | 195,936 |
| 134 | 6.1.3 | 1.3 Documentar y analizar resultados de pruebas | 2d | 2025-04-02 | 2025-04-04 | 133 | 0d | Computador; Red de Internet; Tester | 48h | 97,968 |
| 135 | 6.1.4 | 1.4 Realizar pruebas de usabilidad y aceptación | 3d | 2025-04-04 | 2025-04-08 | 134 | 0d | Computador; Red de Internet; Tester | 72h | 146,952 |
| 136 | 6.1.5 | 1.5 Documentar resultados finales de pruebas | 1d | 2025-04-08 | 2025-04-09 | 135 | 0d | Computador; Red de Internet; Tester | 24h | 48,984 |
| 137 | 6.2 | **2. Plan de instalación, plan de respaldo, plan de migración y capacitación.** | 11d | 2025-04-09 | 2025-04-24 |  | 0d |  | 112h | 373,272 |
| 138 | 6.2.1 | 2.1 Elaborar plan de instalación | 2d | 2025-04-09 | 2025-04-11 | 136 | 0d | Administrador de Sistema | 16h | 90,528 |
| 139 | 6.2.2 | 2.2 Elaborar plan de respaldo | 2d | 2025-04-11 | 2025-04-14 | 138 | 0d | Administrador de Sistema | 16h | 90,528 |
| 140 | 6.2.3 | 2.3 Elaborar plan de migración de datos | 2d | 2025-04-14 | 2025-04-16 | 139 | 0d | Administrador de Base de Datos | 16h | 90,528 |
| 141 | 6.2.4 | 2.4 Diseñar y realizar capacitación para usuarios | 3d | 2025-04-16 | 2025-04-22 | 140 | 0d | Computador; Red de Internet | 48h | 11,160 |
| 142 | 6.2.5 | 2.5 Documentar todos los planes y la capacitación | 2d | 2025-04-22 | 2025-04-24 | 141 | 0d | Administrador de Sistema | 16h | 90,528 |
| 143 | 6.3 | **3. Elaboración de manuales de instalación, técnico y de usuario** | 11d | 2025-04-24 | 2025-05-08 |  | 0d |  | 96h | 499,624 |
| 144 | 6.3.1 | 3.1 Redactar manual de instalación | 2d | 2025-04-24 | 2025-04-26 | 142 | 0d | Administrador de Sistema | 16h | 90,528 |
| 145 | 6.3.2 | 3.2 Redactar manual técnico | 3d | 2025-04-26 | 2025-04-30 | 144 | 0d | Administrador de Sistema | 24h | 135,792 |
| 146 | 6.3.3 | 3.3 Redactar manual de usuario | 3d | 2025-04-30 | 2025-05-05 | 145 | 0d | Administrador de Sistema | 24h | 135,792 |
| 147 | 6.3.4 | 3.4 Validar y revisar manuales con stakeholders | 2d | 2025-05-05 | 2025-05-07 | 146 | 0d | Administrador de Sistema | 16h | 90,528 |
| 148 | 6.3.5 | 3.5 Publicar y distribuir manuales finales | 1d | 2025-05-07 | 2025-05-08 | 147 | 0d | Administrador de Sistema; Computador | 16h | 46,984 |
